Schedule from MS Project, 2010-05-20 to 2010-10-21, A marks actual dates.

## Calendars

- Standard: Mon-Fri 08:00-12:00, 13:00-17:00; Sat-Sun off. Exceptions (off unless hours are given): 2010-05-31, 2010-07-05, 2010-09-06.

## Resources

| Resource |
| --- |
| Bediako |
| Satish |
| Prasad |
| All |
| Vijay |
| John |
| Greg |
| Dan |
| Santhosh |
| Satisj |
| Sree |
| Satich |
| Santosh |
| Vijat |

## Schedule

| ID | WBS | Task | Type | Duration | Start | Finish | Predecessors | Complete | Remaining | Total slack | Free slack | Constraint | Resources | Work | Actual work | Text1 |
| --- | --- | --- | --- | --- | --- | --- | --- | --- | --- | --- | --- | --- | --- | --- | --- | --- |
| 2 | 1 | **Project management and set-up tasks** |  | 108d | 2010-05-20 A | 2010-10-21 |  | 67% | 36d | 0d |  |  |  | 560h | 456h |  |
| 3 | 1.1 | **Inception** |  | 21d | 2010-05-20 A | 2010-06-18 A |  | 100% |  |  |  |  |  | 168h | 168h |  |
| 4 | 1.1.1 | Project awarded | milestone | 0d | 2010-05-20 A | 2010-05-20 A |  | 100% |  |  |  | start no earlier than 2010-05-20 |  |  |  |  |
| 5 | 1.1.2 | Kickoff meeting |  | 1d | 2010-05-28 A | 2010-05-28 A |  | 100% |  |  |  | start no earlier than 2010-05-28 |  |  |  |  |
| 6 | 1.1.3 | Draft Project Management Plan |  | 10d | 2010-06-07 A | 2010-06-18 A |  | 100% |  |  |  | start no earlier than 2010-06-07 | Greg | 80h | 80h |  |
| 7 | 1.1.4 | **New member ramp-up & SDK training** |  | 6d | 2010-06-07 A | 2010-06-14 A |  | 100% |  |  |  |  |  | 88h | 88h |  |
| 8 | 1.1.4.1 | Self study |  | 5d | 2010-06-07 A | 2010-06-11 A |  | 100% |  |  |  | start no earlier than 2010-06-07 | Bediako; John | 80h | 80h |  |
| 9 | 1.1.4.2 | SDK training class |  | 1d | 2010-06-14 A | 2010-06-14 A |  | 100% |  |  |  | start no earlier than 2010-06-14 | All | 8h | 8h |  |
| 10 | 1.2 | **Elaboration** |  | 17d | 2010-06-21 A | 2010-07-14 |  | 63% | 6.3d | 70d |  |  |  | 352h | 272h |  |
| 11 | 1.2.1 | Review and deliver Project Management Plan |  | 5d | 2010-06-21 A | 2010-06-25 A |  | 100% |  |  |  | start no earlier than 2010-06-21 | Greg; Satish | 80h | 80h |  |
| 12 | 1.2.2 | Scope document (charter) |  | 12d | 2010-06-21 A | 2010-07-07 A |  | 100% |  |  |  | start no earlier than 2010-06-21 | Greg; Satish | 192h | 192h |  |
| 13 | 1.2.3 | Design Review Package - note: will not be 10 days before C1 |  | 10d | 2010-06-30 | 2010-07-14 | 12FF, 59FF, 102FF |  |  | 70d |  |  | All | 80h |  |  |
| 14 | 1.3 | **Transition** |  | 5d | 2010-10-01 | 2010-10-07 |  |  |  | 0d |  | start no earlier than 2010-09-27 |  |  |  |  |
| 15 | 1.3.1 | Project Summary Report |  | 5d | 2010-10-01 | 2010-10-07 | 89 |  |  | -1d | 0d | finish no later than 2010-10-07 |  |  |  |  |
| 16 | 1.4 | **Monthly status reports** |  | 86d | 2010-06-10 A | 2010-10-11 |  | 40% | 51.6d | 8d |  |  |  | 40h | 16h |  |
| 17 | 1.4.1 | Monthly status report 1 |  | 1d | 2010-06-10 A | 2010-06-10 A |  | 100% |  |  |  | start no earlier than 2010-06-10 | Satish | 8h | 8h |  |
| 18 | 1.4.2 | Monthly status report 2 |  | 1d | 2010-07-12 A | 2010-07-12 A |  | 100% |  |  |  | start no earlier than 2010-07-10 | Greg | 8h | 8h |  |
| 19 | 1.4.3 | Monthly status report 3 |  | 1d | 2010-08-10 | 2010-08-10 |  |  |  | 51d |  | start no earlier than 2010-08-10 | Greg | 8h |  |  |
| 20 | 1.4.4 | Monthly status report 4 |  | 1d | 2010-09-10 | 2010-09-10 |  |  |  | 29d |  | start no earlier than 2010-09-10 | Greg | 8h |  |  |
| 21 | 1.4.5 | Monthly status report 5 |  | 1d | 2010-10-11 | 2010-10-11 |  |  |  | 8d |  | start no earlier than 2010-10-10 | Greg | 8h |  |  |
| 22 | 1.5 | Project Completion | milestone | 0d | 2010-10-21 | 2010-10-21 |  |  |  | 0d |  | must finish on 2010-10-21 |  |  |  |  |
| 24 | 2 | **SDK 4.3 release** |  | 19d | 2010-05-28 A | 2010-06-24 |  | 96% | 0.81d | 83d |  |  |  | 576h | 576h | 1,2,10 |
| 25 | 2.1 | QA support |  | 6d | 2010-05-28 A | 2010-06-07 A |  | 100% |  |  |  | start no earlier than 2010-05-28 | Santhosh; Vijay [75%] | 96h | 96h |  |
| 26 | 2.2 | Unit testing |  | 6d | 2010-06-02 A | 2010-06-09 A |  | 100% |  |  |  | start no earlier than 2010-06-02 | John [50%]; Vijay [25%] | 96h | 96h |  |

| ID | WBS | Task | Type | Duration | Start | Finish | Predecessors | Complete | Remaining | Total slack | Constraint | Resources | Work | Actual work |
| --- | --- | --- | --- | --- | --- | --- | --- | --- | --- | --- | --- | --- | --- | --- |
| 27 | 2.3 | **Update guides** |  | 5d | 2010-06-01 A | 2010-06-07 A |  | 100% |  |  |  |  | 40h | 40h |
| 28 | 2.3.1 | Workbench Users Guide |  | 1d | 2010-06-01 A | 2010-06-01 A |  | 100% |  |  | start no earlier than 2010-06-01 | Dan | 8h | 8h |
| 29 | 2.3.2 | SDK Programmers Guide |  | 1d | 2010-06-02 A | 2010-06-02 A | 28 | 100% |  |  |  | Dan | 8h | 8h |
| 30 | 2.3.3 | UML Modeling Guide |  | 1d | 2010-06-03 A | 2010-06-03 A | 29 | 100% |  |  |  | Dan | 8h | 8h |
| 31 | 2.3.4 | Object Relational Mapping Guide |  | 1d | 2010-06-04 A | 2010-06-04 A | 30 | 100% |  |  |  | Dan | 8h | 8h |
| 32 | 2.3.5 | How To Use SDK Guide |  | 1d | 2010-06-07 A | 2010-06-07 A | 31 | 100% |  |  |  | Dan | 8h | 8h |
| 33 | 2.4 | **Update documentation** |  | 10d | 2010-06-07 A | 2010-06-18 A |  | 100% |  |  |  |  | 160h | 160h |
| 34 | 2.4.1 | ISO Common Architectural Overview |  | 2d | 2010-06-07 A | 2010-06-08 A |  | 100% |  |  | start no earlier than 2010-06-07 | Prasad; Dan [50%] | 32h | 32h |
| 35 | 2.4.2 | SDK release notes |  | 2d | 2010-06-09 A | 2010-06-10 A | 34 | 100% |  |  |  | Prasad; Dan [50%] | 32h | 32h |
| 36 | 2.4.3 | Workbench release notes |  | 2d | 2010-06-11 A | 2010-06-14 A | 35 | 100% |  |  |  | Prasad; Dan [50%] | 32h | 32h |
| 37 | 2.4.4 | ISO Common release notes |  | 1d | 2010-06-15 A | 2010-06-15 A | 36 | 100% |  |  |  | Prasad; Dan [50%] | 16h | 16h |
| 38 | 2.4.5 | SDK:Example/ISOExample readme |  | 1d | 2010-06-16 A | 2010-06-16 A | 37 | 100% |  |  |  | Prasad; Dan [50%] | 16h | 16h |
| 39 | 2.4.6 | Workbench readme |  | 1d | 2010-06-17 A | 2010-06-17 A | 38 | 100% |  |  |  | Prasad; Dan [50%] | 16h | 16h |
| 40 | 2.4.7 | ISO Common readme |  | 1d | 2010-06-18 A | 2010-06-18 A | 39 | 100% |  |  |  | Prasad; Dan [50%] | 16h | 16h |
| 41 | 2.5 | Release preparation (gforge, download center, etc.) |  | 10d | 2010-06-07 A | 2010-06-18 A |  | 100% |  |  | start no earlier than 2010-06-07 | Dan [50%] | 80h | 80h |
| 42 | 2.6 | Workbench deployment, release packaging, readme |  | 3d | 2010-06-11 A | 2010-06-15 A |  | 100% |  |  | start no earlier than 2010-06-11 | Santhosh | 24h | 24h |
| 43 | 2.7 | User acceptance testing |  | 5d | 2010-06-14 A | 2010-06-18 A |  | 100% |  |  | start no earlier than 2010-06-14 | Satish; Sree | 80h | 80h |
| 44 | 2.8 | Release ready | milestone | 0d | 2010-06-21 A | 2010-06-21 A |  | 100% |  |  | start no earlier than 2010-06-21 |  |  |  |
| 45 | 2.9 | Release announcement | milestone | 0d | 2010-06-22 A | 2010-06-22 A |  | 100% |  |  | start no earlier than 2010-06-22 |  |  |  |
| 46 | 2.10 | Software Code Base (4.3) |  | 1d | 2010-06-24 | 2010-06-24 | 44FS+3d |  |  | 83d | start no earlier than 2010-06-15 |  |  |  |
| 47 | 2.11 | Deployment Package (4.3) |  | 1d | 2010-06-24 | 2010-06-24 | 44FS+3d |  |  | 83d | start no earlier than 2010-06-15 |  |  |  |
| 49 | 3 | **ISO 21090 Java library 2.2 (embedded in SDK)** |  | 79d | 2010-06-21 A | 2010-10-11 |  | 27% | 57.7d | 8d |  |  | 624h | 176h |
| 50 | 3.1 | **Elaboration** |  | 10d | 2010-06-21 A | 2010-07-02 A |  | 100% |  |  | start no earlier than 2010-06-21 |  | 80h | 80h |
| 51 | 3.1.1 | **E1 - Sprint 1** |  | 10d | 2010-06-21 A | 2010-07-02 A |  | 100% |  |  |  |  | 80h | 80h |
| 52 | 3.1.1.1 | **Requirements and Design Specifications** |  | 10d | 2010-06-21 A | 2010-07-02 A |  | 100% |  |  |  |  | 80h | 80h |
| 53 | 3.1.1.1.1 | GAP_Analysis_Iso21090.doc |  | 4d | 2010-06-21 A | 2010-06-24 A |  | 100% |  |  |  | Vijay | 32h | 32h |
| 54 | 3.1.1.1.2 | Design analysis |  | 6d | 2010-06-25 A | 2010-07-02 A | 53 | 100% |  |  |  | Vijay | 48h | 48h |

| ID | WBS | Task | Type | Duration | Start | Finish | Predecessors | Complete | Remaining | Total slack | Free slack | Constraint | Resources | Work | Actual work |
| --- | --- | --- | --- | --- | --- | --- | --- | --- | --- | --- | --- | --- | --- | --- | --- |
| 55 | 3.2 | **Construction** |  | 58d | 2010-07-06 A | 2010-09-24 |  | 20% | 46.4d | 19d |  |  |  | 544h | 96h |
| 56 | 3.2.1 | **C1- Sprint 2** |  | 19d | 2010-07-06 A | 2010-07-30 |  | 78% | 4.22d | 58d |  | start no earlier than 2010-07-06 |  | 144h | 96h |
| 57 | 3.2.1.1 | Finalized requirements from PODS/COPPA | milestone | 0d | 2010-07-06 | 2010-07-06 | 54 |  |  | 77d | 0d |  |  |  |  |
| 58 | 3.2.1.2 | **Requirements and Design Specification (cont.)** |  | 7d | 2010-07-06 A | 2010-07-14 A | 57 | 100% |  |  |  |  |  | 56h | 56h |
| 59 | 3.2.1.2.1 | ISO 21090 Common Library version 2.2 Design.doc |  | 7d | 2010-07-06 A | 2010-07-14 A |  | 100% |  |  |  | start no earlier than 2010-07-06 | Vijay | 56h | 56h |
| 60 | 3.2.1.3 | [Add data types for PODS/COPPA if required] | milestone | 0d | 2010-07-06 | 2010-07-06 | 57 |  |  | 77d |  | start no earlier than 2010-06-28 |  |  |  |
| 61 | 3.2.1.4 | Java API expansion implementation -rnd 1 |  | 3d | 2010-07-15 A | 2010-07-19 A | 60, 59 | 100% |  |  |  |  | Vijay | 24h | 24h |
| 62 | 3.2.1.5 | JAXB transformers - rnd 1 |  | 2d | 2010-07-21 A | 2010-07-22 A | 61 | 100% |  |  |  | start no earlier than 2010-07-21 | Vijay | 16h | 16h |
| 63 | 3.2.1.6 | Java API expansion implementation - rnd 2 |  | 2d | 2010-07-23 A | 2010-07-26 A | 62 | 100% |  |  |  | start no earlier than 2010-07-22 |  |  |  |
| 64 | 3.2.1.7 | JAXB transformers - rnd 2 |  | 2d | 2010-07-27 | 2010-07-28 | 63 |  |  | 58d | 0d | start no earlier than 2010-07-22 |  |  |  |
| 65 | 3.2.1.8 | Sprint C1 Integration |  | 2d | 2010-07-29 | 2010-07-30 | 64 |  |  | 58d |  |  | Vijay; Santosh; Dan | 48h |  |
| 66 | 3.2.2 | **C2 - Sprint 3** |  | 21d | 2010-08-02 | 2010-08-30 |  |  |  | 37d |  | start no earlier than 2010-08-02 |  | 176h |  |
| 67 | 3.2.2.1 | Revisit req doc with regard to data types successfully implemented |  | 1d | 2010-08-02 | 2010-08-02 |  |  |  | 45d | 0d | start no earlier than 2010-06-28 | Vijay | 8h |  |
| 68 | 3.2.2.2 | Junit test cases |  | 6d | 2010-08-03 | 2010-08-10 | 67 |  |  | 45d | 8d |  | Vijay | 48h |  |
| 69 | 3.2.2.3 | PIM Document update |  | 3d | 2010-08-11 | 2010-08-13 | 67 |  |  | 48d |  | start no earlier than 2010-08-11 | Vijay | 24h |  |
| 70 | 3.2.2.4 | Finalized design documents to QA | milestone | 0d | 2010-08-09 | 2010-08-09 |  |  |  | 53d |  | start no earlier than 2010-08-09 |  |  |  |
| 71 | 3.2.2.5 | Test Plan |  | 5d | 2010-08-06 | 2010-08-13 | 73FF |  |  | 49d | 0d |  | Vijay | 40h |  |
| 72 | 3.2.2.6 | Revisit new data types listing and adjust test plan |  | 1d | 2010-08-12 | 2010-08-13 | 71FF |  |  | 49d |  |  | Vijay | 8h |  |
| 73 | 3.2.2.7 | Test Plan Due | milestone | 0d | 2010-08-13 | 2010-08-13 |  |  |  | 49d | 0d | start no earlier than 2010-08-13 |  |  |  |
| 74 | 3.2.2.8 | CI Server |  | 3d | 2010-08-23 | 2010-08-25 | 68 |  |  | 37d | 0d | start no earlier than 2010-08-23 | Vijay | 24h |  |
| 75 | 3.2.2.9 | Sprint C2 Integration |  | 3d | 2010-08-26 | 2010-08-30 | 74 |  |  | 37d |  |  | Vijay | 24h |  |
| 76 | 3.2.3 | **C3 - Sprint 4 (QA)** |  | 19d | 2010-08-30 | 2010-09-24 |  |  |  | -1d | 0d | start no earlier than 2010-08-30 |  | 224h |  |
| 77 | 3.2.3.1 | Code base available for QA | milestone | 0d | 2010-08-30 | 2010-08-30 |  |  |  | 38d |  |  |  |  |  |
| 78 | 3.2.3.2 | QA Support |  | 19d | 2010-08-30 | 2010-09-24 |  |  |  | -1d | 0d |  | All | 152h |  |

| ID | WBS | Task | Type | Duration | Start | Finish | Predecessors | Complete | Remaining | Total slack | Free slack | Constraint | Resources | Work | Actual work | Text1 |
| --- | --- | --- | --- | --- | --- | --- | --- | --- | --- | --- | --- | --- | --- | --- | --- | --- |
| 79 | 3.2.3.3 | **Update documentation** |  | 9d | 2010-08-30 | 2010-09-10 |  |  |  | 9d |  |  |  | 72h |  |  |
| 80 | 3.2.3.3.1 | ISO Common Architectural Overview |  | 2d | 2010-08-30 | 2010-08-31 |  |  |  | 16d |  |  | Vijay | 16h |  |  |
| 81 | 3.2.3.3.2 | ISO Common release notes |  | 2d | 2010-09-01 | 2010-09-02 |  |  |  | 14d |  | start no earlier than 2010-09-01 | Vijay | 16h |  |  |
| 82 | 3.2.3.3.3 | ISO Common readme |  | 1d | 2010-09-03 | 2010-09-03 |  |  |  | 13d |  | start no earlier than 2010-09-03 | Vijay | 8h |  |  |
| 83 | 3.2.3.3.4 | Limitations and known issues |  | 2d | 2010-09-07 | 2010-09-08 |  |  |  | 11d |  | start no earlier than 2010-09-07 | Vijay | 16h |  |  |
| 84 | 3.2.3.3.5 | Variations between ISO 21090 XSD and UML/pdf |  | 2d | 2010-09-09 | 2010-09-10 |  |  |  | 9d |  | start no earlier than 2010-09-09 | Vijay | 16h |  |  |
| 85 | 3.2.3.4 | Final product documentation to QA | milestone | 0d | 2010-09-20 | 2010-09-20 |  |  |  | 24d |  | start no earlier than 2010-09-20 |  |  |  |  |
| 86 | 3.2.3.5 | Download Center updates |  | 2d | 2010-09-23 | 2010-09-24 |  |  |  | -1d | 0d | finish no earlier than 2010-09-24 |  |  |  |  |
| 87 | 3.2.3.6 | QA Complete | milestone | 0d | 2010-09-24 | 2010-09-24 |  |  |  | 20d |  | start no earlier than 2010-09-24 |  |  |  |  |
| 88 | 3.3 | **Transition** |  | 11d | 2010-09-27 | 2010-10-11 |  |  |  | -1d | 0d |  |  |  |  |  |
| 89 | 3.3.1 | User Acceptance Testing |  | 5d | 2010-09-27 | 2010-10-01 | 78, 79, 86 |  |  | -1d | 0d |  |  |  |  |  |
| 90 | 3.3.2 | (Test Package) |  | 1d | 2010-10-04 | 2010-10-04 | 89 |  |  | 8d | 0d |  |  |  |  |  |
| 91 | 3.3.3 | ISO 21090 Java Library 2.2 Release |  | 1d | 2010-10-05 | 2010-10-05 | 90 |  |  | 8d | 0d |  |  |  |  |  |
| 92 | 3.3.4 | Software Code Base (2.2) |  | 1d | 2010-10-11 | 2010-10-11 | 91FS+3d |  |  | 8d |  |  |  |  |  |  |
| 93 | 3.3.5 | Deployment Package (2.2) |  | 1d | 2010-10-11 | 2010-10-11 | 91FS+3d |  |  | 8d |  |  |  |  |  |  |
| 95 | 4 | **SDK 4.4 release (using 2.1 library, integrated with caGrid 1.4)** |  | 79d | 2010-06-21 A | 2010-10-11 |  | 30% | 55.14d | 8d |  |  |  | 1213.33h | 369.33h |  |
| 96 | 4.1 | **Elaboration** |  | 10d | 2010-06-21 A | 2010-07-02 A |  | 100% |  |  |  |  |  | 120h | 120h |  |
| 97 | 4.1.1 | **E1 - Sprint 1** |  | 10d | 2010-06-21 A | 2010-07-02 A |  | 100% |  |  |  |  |  | 120h | 120h |  |
| 98 | 4.1.1.1 | Functional Analysis |  | 5d | 2010-06-21 A | 2010-06-25 A |  | 100% |  |  |  | start no earlier than 2010-06-21 | Dan | 40h | 40h | 1-6,8 |
| 99 | 4.1.1.2 | Requirements and Design Specifications |  | 5d | 2010-06-28 A | 2010-07-02 A | 98 | 100% |  |  |  | start no earlier than 2010-06-15 | Dan; Santhosh | 80h | 80h | 1-6,8 |
| 100 | 4.2 | **Construction** |  | 58d | 2010-07-06 A | 2010-09-24 |  | 27% | 42.46d | 19d |  |  |  | 1093.33h | 249.33h |  |
| 101 | 4.2.1 | **C1- Sprint 2** |  | 19d | 2010-07-06 A | 2010-07-30 |  | 91% | 1.8d | 58d |  | start no earlier than 2010-07-06 |  | 309.33h | 249.33h |  |
| 102 | 4.2.1.1 | **Requirements and Design specifications (cont)** |  | 4d | 2010-07-06 A | 2010-07-09 A |  | 100% |  |  |  |  |  | 72h | 72h |  |
| 103 | 4.2.1.1.1 | SDK_4.4_ISO_Data_Type_Support_within_Web_UI_Design_Document.docx |  | 2d | 2010-07-06 A | 2010-07-07 A | 99 | 100% |  |  |  |  | Dan | 16h | 16h | 5,6,8 |
| 104 | 4.2.1.1.2 | SDK 4.4_ISO_Data_Type_Support.EAP |  | 2d | 2010-07-08 A | 2010-07-09 A | 103 | 100% |  |  |  |  | Dan | 16h | 16h | 1,2 |
| 105 | 4.2.1.1.3 | RESTfulAPI_Design.docx |  | 4d | 2010-07-06 A | 2010-07-09 A | 99 | 100% |  |  |  |  | Santhosh | 32h | 32h |  |
| 106 | 4.2.1.1.4 | Using JAXB with ISO 21090 data types.doc |  | 1d | 2010-07-08 A | 2010-07-08 A |  | 100% |  |  |  | start no earlier than 2010-07-08 | Prasad | 8h | 8h |  |
| 107 | 4.2.1.2 | caGrid code freeze | milestone | 0d | 2010-07-06 A | 2010-07-06 A |  | 100% |  |  |  | start no earlier than 2010-07-06 |  |  |  |  |
| 108 | 4.2.1.3 | Meet with SI regarding metadata repository integration | milestone | 0d | 2010-07-06 A | 2010-07-06 A |  | 100% |  |  |  | start no earlier than 2010-06-28 | Greg; Satish |  |  | 11,12 |
| 109 | 4.2.1.4 | Conversion of RESTful query to ISO object |  | 4d | 2010-07-12 A | 2010-07-15 A | 105 | 100% |  |  |  |  | Santhosh | 32h | 32h | 2,8 |
| 110 | 4.2.1.5 | Meet with caGrid to discuss integration | milestone | 0d | 2010-07-15 A | 2010-07-15 A | 109 | 100% |  |  |  | start no earlier than 2010-07-15 | Greg; Satish |  |  |  |
| 111 | 4.2.1.6 | Query Translator ISO object to HQL Query |  | 4d | 2010-07-16 A | 2010-07-21 A | 110 | 100% |  |  |  |  | Santhosh | 32h | 32h | 2,3 |
| 112 | 4.2.1.7 | JUnit test cases (query/object conversions) |  | 2d | 2010-07-22 A | 2010-07-23 A | 109, 111 | 100% |  |  |  | start no earlier than 2010-07-21 | Santhosh | 16h | 16h | 2,3 |
| 113 | 4.2.1.8 | Class Cache Map for Searchable fields for GUI |  | 3d | 2010-07-26 A | 2010-07-28 A | 112 | 100% |  |  |  |  | Santhosh [22.2%] | 5.33h | 5.33h |  |
| 114 | 4.2.1.9 | Modify / unit test Workbench changes to remove API enabling restrictions |  | 1d | 2010-07-12 A | 2010-07-12 A | 102 | 100% |  |  |  |  | Dan | 8h | 8h | 4,5 |
| 115 | 4.2.1.10 | Modify / unit test build scripts to remove API enabling restrictions |  | 1d | 2010-07-13 A | 2010-07-13 A | 114 | 100% |  |  |  |  | Dan | 8h | 8h | 4,5 |
| 116 | 4.2.1.11 | Support Search Criteria input from HTML for all supported ISO data types |  | 8d | 2010-07-14 A | 2010-07-23 A | 115 | 100% |  |  |  |  | Dan | 64h | 64h | 4,5 |
| 117 | 4.2.1.12 | Integrate metadata to only selectively generate ISO data type input fields that are actually mapped to the database |  | 3d | 2010-07-26 A | 2010-07-28 | 116, 113SS | 50% | 1.5d | 49d | 0d |  | Dan | 24h | 12h |  |
| 118 | 4.2.1.13 | Sprint C1 Integration |  | 2d | 2010-07-29 | 2010-07-30 | 112, 117 |  |  | 58d |  | start no earlier than 2010-06-15 | Vijay; Santhosh; Dan | 48h |  |  |

| ID | WBS | Task | Type | Duration | Start | Finish | Predecessors | Total slack | Free slack | Constraint | Resources | Work | Text1 |
| --- | --- | --- | --- | --- | --- | --- | --- | --- | --- | --- | --- | --- | --- |
| 119 | 4.2.2 | **C2 - Sprint 3** |  | 20d | 2010-08-02 | 2010-08-27 |  | 38d |  | start no earlier than 2010-08-02 |  | 376h |  |
| 120 | 4.2.2.1 | XSLT for GETHTML and GETJSON |  | 7d | 2010-08-02 | 2010-08-10 |  | 47d | 0d | start no earlier than 2010-08-02 | Santhosh | 56h | 2,3 |
| 121 | 4.2.2.2 | Junit test cases (class cache, XSLT) |  | 2d | 2010-08-11 | 2010-08-12 | 120 | 47d | 7d |  | Santhosh | 16h | 2,3 |
| 122 | 4.2.2.3 | caGrid integration (CQL 2.0) |  | 7d | 2010-08-13 | 2010-08-23 | 110 | 42d |  | start no earlier than 2010-08-13 | Santhosh | 56h |  |
| 123 | 4.2.2.4 | Integrate submitted ISO data type criteria with existing search functionality |  | 3d | 2010-08-02 | 2010-08-04 | 117 | 47d | 0d | start no earlier than 2010-07-21 | Dan | 24h | 2,3,4,5 |
| 124 | 4.2.2.5 | Implement and unit test client-side form validation |  | 8d | 2010-08-05 | 2010-08-16 | 123 | 47d |  | start no earlier than 2010-07-21 | Dan | 64h | 2,3 |
| 125 | 4.2.2.6 | Metada repository integration (MMS) - spreadsheet approach |  | 5d | 2010-08-17 | 2010-08-23 | 108 | 40d | 0d | start no earlier than 2010-08-17 | Dan | 40h | 11,12 |
| 126 | 4.2.2.7 | Known issues from 4.3 |  | 2d | 2010-08-24 | 2010-08-25 | 163 | 38d | 0d | start no earlier than 2010-08-24 | Santhosh; Dan | 32h | 10 |
| 127 | 4.2.2.8 | Finalized design documents to QA | milestone | 0d | 2010-08-09 | 2010-08-09 |  | 53d |  | start no earlier than 2010-08-09 |  |  |  |
| 128 | 4.2.2.9 | Test Plan |  | 5d | 2010-08-06 | 2010-08-13 | 129FF | 49d |  |  | Vijay | 40h |  |
| 129 | 4.2.2.10 | Test Plan Due | milestone | 0d | 2010-08-13 | 2010-08-13 |  | 49d | 0d | start no earlier than 2010-08-13 |  |  |  |
| 130 | 4.2.2.11 | Sprint C2 Integration |  | 2d | 2010-08-26 | 2010-08-27 | 125, 121, 126 | 38d |  | start no earlier than 2010-07-26 | Vijay; Santhosh; Dan | 48h |  |
| 131 | 4.2.3 | **C3 - Sprint 4 (QA)** |  | 19d | 2010-08-30 | 2010-09-24 |  | 19d |  | start no earlier than 2010-08-30 |  | 408h |  |
| 132 | 4.2.3.1 | Code base available for QA | milestone | 0d | 2010-08-30 | 2010-08-30 |  | 38d |  | start no earlier than 2010-06-23 |  |  |  |
| 133 | 4.2.3.2 | QA Support |  | 19d | 2010-08-30 | 2010-09-24 |  | 19d |  | start no earlier than 2010-06-15 | All | 152h | 1-6,8 |
| 134 | 4.2.3.3 | **Update documentation** |  | 7d | 2010-09-01 | 2010-09-10 |  | 29d |  |  |  | 96h |  |
| 135 | 4.2.3.3.1 | SDK release notes |  | 2d | 2010-09-01 | 2010-09-02 |  | 34d |  | start no earlier than 2010-09-01 | Prasad; Santhosh | 32h | 2,8 |
| 136 | 4.2.3.3.2 | Workbench release notes |  | 2d | 2010-09-03 | 2010-09-07 |  | 32d |  | start no earlier than 2010-09-03 | Prasad; Santhosh | 32h | 2,8 |
| 137 | 4.2.3.3.3 | SDK:Example/ISOExample readme |  | 1d | 2010-09-09 | 2010-09-09 |  | 30d |  | start no earlier than 2010-09-09 | Prasad; Santhosh | 16h | 1,2,8 |
| 138 | 4.2.3.3.4 | Workbench readme |  | 1d | 2010-09-10 | 2010-09-10 |  | 29d |  | start no earlier than 2010-09-10 | Prasad; Santhosh | 16h | 4,5 |
| 139 | 4.2.3.4 | **Update guides** |  | 16d | 2010-08-30 | 2010-09-21 |  | 22d |  |  |  | 160h |  |
| 140 | 4.2.3.4.1 | Workbench Users Guide |  | 4d | 2010-08-30 | 2010-09-02 |  | 34d |  | start no earlier than 2010-06-21 | Dan | 32h | 2,4,5,8 |
| 141 | 4.2.3.4.2 | SDK Programmers Guide |  | 4d | 2010-09-03 | 2010-09-09 |  | 30d |  | start no earlier than 2010-09-03 | Dan | 32h | 2,4,5,8 |
| 142 | 4.2.3.4.3 | UML Modeling Guide |  | 4d | 2010-09-09 | 2010-09-14 |  | 27d |  | start no earlier than 2010-09-09 | Dan | 32h | 2,4,5,8 |
| 143 | 4.2.3.4.4 | Object Relational Mapping Guide |  | 4d | 2010-09-15 | 2010-09-20 |  | 23d |  | start no earlier than 2010-09-15 | Dan | 32h | 2,4,5,8 |
| 144 | 4.2.3.4.5 | How To Use SDK Guide |  | 4d | 2010-09-16 | 2010-09-21 |  | 22d |  | start no earlier than 2010-09-16 | Dan | 32h | 2,4,5,8 |
| 145 | 4.2.3.5 | Final product documentation to QA | milestone | 0d | 2010-09-20 | 2010-09-20 |  | 24d |  | start no earlier than 2010-09-20 |  |  |  |
| 146 | 4.2.3.6 | Download Center updates |  | 2d | 2010-09-23 | 2010-09-24 |  | 19d |  | finish no earlier than 2010-09-24 |  |  | 1-6,8 |
| 147 | 4.2.3.7 | QA Complete | milestone | 0d | 2010-09-24 | 2010-09-24 |  | 20d |  | start no earlier than 2010-09-24 |  |  |  |

| ID | WBS | Task | Type | Duration | Start | Finish | Predecessors | Complete | Remaining | Total slack | Free slack | Constraint | Resources | Work | Actual work | Text1 |
| --- | --- | --- | --- | --- | --- | --- | --- | --- | --- | --- | --- | --- | --- | --- | --- | --- |
| 148 | 4.3 | **Transition** |  | 11d | 2010-09-27 | 2010-10-11 |  |  |  | 8d |  |  |  |  |  |  |
| 149 | 4.3.1 | User Acceptance Testing |  | 5d | 2010-09-27 | 2010-10-01 |  |  |  | 14d |  | start no earlier than 2010-09-27 |  |  |  |  |
| 150 | 4.3.2 | (Test Package) |  | 1d | 2010-10-04 | 2010-10-04 |  |  |  | 13d |  | start no earlier than 2010-10-04 |  |  |  |  |
| 151 | 4.3.3 | SDK 4.4 Release |  | 1d | 2010-10-05 | 2010-10-05 |  |  |  | 8d | 0d | start no earlier than 2010-10-05 |  |  |  |  |
| 152 | 4.3.4 | Software Code Base (4.4) |  | 1d | 2010-10-11 | 2010-10-11 | 151FS+3d |  |  | 8d |  | start no earlier than 2010-06-15 |  |  |  |  |
| 153 | 4.3.5 | Deployment Package (4.4) |  | 1d | 2010-10-11 | 2010-10-11 | 151FS+3d |  |  | 8d |  | start no earlier than 2010-06-15 |  |  |  |  |
| 155 | 5 | **Tool enhancement prototypes** |  | 78d? | 2010-06-21 A | 2010-10-08 |  | 67% | 25.42d? | 9d |  |  |  | 800h | 644h | 8,9 |
| 156 | 5.1 | **Elaboration** |  | 10d | 2010-06-21 A | 2010-07-02 A |  | 100% |  |  |  |  |  | 280h | 280h |  |
| 157 | 5.1.1 | **E1 - Sprint 1** |  | 10d | 2010-06-21 A | 2010-07-02 A |  | 100% |  |  |  |  |  | 280h | 280h |  |
| 158 | 5.1.1.1 | Top-down analysis paper - research and rough cut |  | 10d | 2010-06-21 A | 2010-07-02 A |  | 100% |  |  |  | start no earlier than 2010-06-21 | Satish [25%]; Prasad | 100h | 100h |  |
| 159 | 5.1.1.2 | Bottom-up analysis paper - research and rough cut |  | 10d | 2010-06-21 A | 2010-07-02 A |  | 100% |  |  |  | start no earlier than 2010-06-21 | Bediako; Satish [25%] | 100h | 100h |  |
| 160 | 5.1.1.3 | Eclipse service creation wizard research |  | 10d | 2010-06-21 A | 2010-07-02 A |  | 100% |  |  |  | start no earlier than 2010-06-21 | John | 80h | 80h |  |
| 161 | 5.2 | **Construction** |  | 40d? | 2010-07-06 A | 2010-08-30 |  | 63% | 14.72d? | 37d |  |  |  | 520h | 364h |  |
| 162 | 5.2.1 | **C1- Sprint 2** |  | 19d | 2010-07-06 A | 2010-07-30 |  | 70% | 5.7d | 58d |  | start no earlier than 2010-07-06 |  | 520h | 364h |  |
| 163 | 5.2.1.1 | **Top-down analysis paper** |  | 19d | 2010-07-06 A | 2010-07-30 | 158 | 84% | 3d | 54d | 16d |  |  | 152h | 128h |  |
| 164 | 5.2.1.1.1 | Updates, reviews and refinements |  | 16d | 2010-07-06 A | 2010-07-27 A |  | 100% |  |  |  |  | Prasad | 128h | 128h |  |
| 165 | 5.2.1.1.2 | Next Generation caCORE Infrastructure (document) | milestone | 0d | 2010-07-27 A | 2010-07-27 A | 164 | 100% |  |  |  |  | Prasad |  |  |  |
| 166 | 5.2.1.1.3 | caCORE Infrastructure - Next Generation Tooling (presentation) | milestone | 0d | 2010-07-27 A | 2010-07-27 A | 164 | 100% |  |  |  |  | Prasad |  |  |  |
| 167 | 5.2.1.1.4 | Design document |  | 3d | 2010-07-28 | 2010-07-30 | 164 |  |  | 54d |  | start no earlier than 2010-07-22 | Prasad | 24h |  |  |
| 168 | 5.2.1.2 | **Bottom-up analysis paper** |  | 19d | 2010-07-06 A | 2010-07-30 | 159 | 74% | 5d | 58d |  |  |  | 152h | 112h |  |
| 169 | 5.2.1.2.1 | Updates, reviews and refinements |  | 14d | 2010-07-06 A | 2010-07-23 A |  | 100% |  |  |  |  | Bediako | 112h | 112h |  |
| 170 | 5.2.1.2.2 | Next Generation SDK (document) | milestone | 0d | 2010-07-23 A | 2010-07-23 A | 169 | 100% |  |  |  | start no earlier than 2010-07-21 | Bediako |  |  |  |
| 171 | 5.2.1.2.3 | Future SDK - Technical Treatment (presentation) | milestone | 0d | 2010-07-23 A | 2010-07-23 A | 169 | 100% |  |  |  | start no earlier than 2010-07-21 | Bediako |  |  |  |
| 172 | 5.2.1.2.4 | Design document |  | 5d | 2010-07-26 | 2010-07-30 | 169 |  |  | 58d |  | start no earlier than 2010-07-22 | Bediako | 40h |  |  |

| ID | WBS | Task | Duration | Start | Finish | Predecessors | Complete | Remaining | Total slack | Free slack | Constraint | Resources | Work | Actual work | Text1 |
| --- | --- | --- | --- | --- | --- | --- | --- | --- | --- | --- | --- | --- | --- | --- | --- |
| 173 | 5.2.1.3 | **Develop enhancement/protoype plan** | 8d | 2010-07-21 A | 2010-07-30 |  | 50% | 4d | 58d |  |  |  | 64h | 32h |  |
| 174 | 5.2.1.3.1 | Develop task/work plan for enhancements | 4d | 2010-07-21 A | 2010-07-26 A |  | 100% |  |  |  | start no earlier than 2010-07-21 | Satish | 32h | 32h |  |
| 175 | 5.2.1.3.2 | Create workflows | 4d | 2010-07-27 | 2010-07-30 | 174 |  |  | 58d |  | start no earlier than 2010-07-21 | Satish | 32h |  |  |
| 176 | 5.2.1.4 | **Eclipse integration** | 19d | 2010-07-06 A | 2010-07-30 |  | 61% | 7.5d | 58d |  |  |  | 152h | 92h |  |
| 177 | 5.2.1.4.1 | Initial research | 2d | 2010-07-06 A | 2010-07-07 A | 160 | 100% |  |  |  | start no earlier than 2010-06-21 | John | 16h | 16h |  |
| 178 | 5.2.1.4.2 | Project creation wizard - simplistic multi-page with progress | 5d | 2010-07-08 A | 2010-07-14 A | 177 | 100% |  |  |  |  | John | 40h | 40h |  |
| 179 | 5.2.1.4.3 | Project creation wizard - listeners, button start, minor additions | 2d | 2010-07-15 A | 2010-07-16 A | 178 | 100% |  |  |  |  | John | 16h | 16h |  |
| 180 | 5.2.1.4.4 | Eclipse EMF research | 5d | 2010-07-19 A | 2010-07-23 |  | 50% | 2.5d | 58d | 0d | start no earlier than 2010-07-19 | John | 40h | 20h |  |
| 181 | 5.2.1.4.5 | Convert EMF models to EA | 5d | 2010-07-26 | 2010-07-30 | 180 |  |  | 58d |  |  | John | 40h |  |  |
| 182 | 5.2.2 | **C2 - Sprint 3** | 1d? | 2010-08-02 | 2010-08-02 |  |  |  | 57d |  | start no earlier than 2010-08-02 |  |  |  |  |
| 183 | 5.2.2.1 | TBD - Implement XMI/DDL/UML to ECORE | 1d? | 2010-08-02 | 2010-08-02 |  |  |  | 57d |  | start no earlier than 2010-07-21 |  |  |  |  |
| 184 | 5.2.2.2 | TBD - Implement workflows | 1d? | 2010-08-02 | 2010-08-02 |  |  |  | 57d |  | start no earlier than 2010-07-21 |  |  |  |  |
| 185 | 5.2.2.3 | TBD - Reference service implementation | 1d? | 2010-08-02 | 2010-08-02 |  |  |  | 57d |  | start no earlier than 2010-07-21 |  |  |  |  |
| 186 | 5.2.3 | **C3 - Sprint 4** | 1d? | 2010-08-30 | 2010-08-30 |  |  |  | 37d |  | start no earlier than 2010-08-30 |  |  |  |  |
| 187 | 5.2.3.1 | TBD - Scripts | 1d? | 2010-08-30 | 2010-08-30 |  |  |  | 37d |  | start no earlier than 2010-07-21 |  |  |  |  |
| 188 | 5.2.3.2 | TBD - Integration | 1d? | 2010-08-30 | 2010-08-30 |  |  |  | 37d |  | start no earlier than 2010-07-21 |  |  |  |  |
| 189 | 5.2.3.3 | TBD - Demo | 1d? | 2010-08-30 | 2010-08-30 |  |  |  | 37d |  | start no earlier than 2010-07-21 |  |  |  |  |
| 190 | 5.2.3.4 | TBD - Documentation | 1d? | 2010-08-30 | 2010-08-30 |  |  |  | 37d |  | start no earlier than 2010-06-15 |  |  |  |  |
| 191 | 5.3 | **Transition** | 10d | 2010-09-27 | 2010-10-08 |  |  |  | 9d |  | start no earlier than 2010-09-27 |  |  |  |  |
| 192 | 5.3.1 | TBD | 10d | 2010-09-27 | 2010-10-08 |  |  |  | 9d |  | start no earlier than 2010-06-28 |  |  |  |  |
| 194 | 6 | User support - ongoing | 93d | 2010-05-28 | 2010-10-08 |  |  |  | 9d |  | start no earlier than 2010-05-28 | All | 744h |  | 1,10 |
| 195 | 7 | Training development support | 10d? | 2010-08-02 | 2010-08-13 |  |  |  | 48d |  | start no earlier than 2010-08-02 | Satish | 80h |  | 10 |
| 197 | 8 | **Major events affecting availability** | 75d | 2010-06-01 | 2010-09-15 |  |  |  | 26d |  |  |  | 168h |  |  |
| 198 | 8.1 | VCDE-Architecture Face To Face & Prep | 4d | 2010-06-01 | 2010-06-04 |  |  |  | 97d |  | start no earlier than 2010-06-01 | Bediako; Satish; Prasad; Vijay | 128h |  |  |
| 199 | 8.2 | caBIG Annual Meeting & Prep | 5d | 2010-09-09 | 2010-09-15 |  |  |  | 26d |  | start no earlier than 2010-09-09 | All | 40h |  |  |

| ID | WBS | Task | Type | Duration | Start | Finish | Total slack | Constraint | Resources | Work |
| --- | --- | --- | --- | --- | --- | --- | --- | --- | --- | --- |
| 201 | 9 | **Vacation** |  | 29d | 2010-07-20 | 2010-08-27 | 19d |  |  | 80h |
| 202 | 9.1 | Greg |  | 1d | 2010-07-20 | 2010-07-20 | 66d | start no earlier than 2010-07-20 |  |  |
| 203 | 9.2 | Greg |  | 5d | 2010-08-09 | 2010-08-13 | 48d | start no earlier than 2010-08-09 |  |  |
| 204 | 9.3 | Vijay |  | 10d | 2010-08-16 | 2010-08-27 | 0d | must start on 2010-08-16 | Vijay | 80h |
| 206 | 10 | Contract deliverables are in blue | milestone | 0d | 2010-05-20 | 2010-05-20 | 108d |  |  |  |
| 207 | 11 | Non-contract deliverables are in maroon | milestone | 0d | 2010-07-13 | 2010-07-13 | 72d | start no earlier than 2010-07-13 |  |  |
| 208 | 12 | Key dates/tasks for interactions with external teams are in green | milestone | 0d | 2010-06-23 | 2010-06-23 | 85d | start no earlier than 2010-06-23 |  |  |
| 211 | 13 | **Reference to objectives** |  | 1d? | 2010-07-21 | 2010-07-21 | 65d |  |  |  |
| 212 | 13.1 | 1) Maintenance of and technical support for the ISO 21090 Java Library |  | 1d? | 2010-07-21 | 2010-07-21 | 65d | start no earlier than 2010-07-21 |  |  |
| 213 | 13.2 | 2) caCORE SDK support for new data types |  | 1d? | 2010-07-21 | 2010-07-21 | 65d | start no earlier than 2010-07-21 |  |  |
| 214 | 13.3 | 3) Provide querying of new data types via Java API, remote API, RESTful API, and caGrid service |  | 1d? | 2010-07-21 | 2010-07-21 | 65d | start no earlier than 2010-07-21 |  |  |
| 215 | 13.4 | 4) Provide a solution for the SDK web interface to support query building for ISO 21090 data types. Enhance the QBE translator and integrate with the CQL query translator to support new data types. |  | 1d? | 2010-07-21 | 2010-07-21 | 65d | start no earlier than 2010-07-21 |  |  |
| 216 | 13.5 | 5) Provide an easy user interface for users to navigate the domain model browser. From the domain model browser, users should be able to query the system using the query builder. |  | 1d? | 2010-07-21 | 2010-07-21 | 65d | start no earlier than 2010-07-21 |  |  |
| 217 | 13.6 | 6) Support caGrid and Introduce with regard to CQL changes and data types used by COPPA/PODS |  | 1d? | 2010-07-21 | 2010-07-21 | 65d | start no earlier than 2010-07-21 |  |  |
| 218 | 13.7 | 7) Extension of the ISO 21090 library to support operations on data types |  | 1d? | 2010-07-21 | 2010-07-21 | 65d | start no earlier than 2010-07-21 |  |  |
| 219 | 13.8 | 8) Maintain, enhance, and/or extend the existing tools to support rapid development of services that are compatible with the caBIG infrastructure and allow services to support data sharing securely and efficiently |  | 1d? | 2010-07-21 | 2010-07-21 | 65d | start no earlier than 2010-07-21 |  |  |
| 220 | 13.9 | 9) Evaluate existing tools for their ability to support service development in BIG HEAS, enhance existing tools, and develop new tools to support the emerging business needs |  | 1d? | 2010-07-21 | 2010-07-21 | 65d | start no earlier than 2010-07-21 |  |  |
| 221 | 13.10 | 10) Full life cycle operational and user support of SDK, CSM, and CLM |  | 1d? | 2010-07-21 | 2010-07-21 | 65d | start no earlier than 2010-07-21 |  |  |
| 222 | 13.11 | 11) Enhance caGrid’s Metadata Model Service (MMS) to read the metadata from the target semantic infrastructure... |  | 1d? | 2010-07-21 | 2010-07-21 | 65d | start no earlier than 2010-07-21 |  |  |
| 223 | 13.12 | 12) Enhance Data Service infrastructure to support new MMS |  | 1d? | 2010-07-21 | 2010-07-21 | 65d | start no earlier than 2010-07-21 |  |  |
